# 3.3大学生兼职平台估计资源

Schedule from MS Project, 2019-03-11 to 2019-05-27, scheduled back from the finish, costs in ¥.

## Calendars

- “标准”的副本: Mon-Fri 08:00-12:00, 13:00-17:00; Sat-Sun off.

## Resources

| Resource | Rate |
| --- | --- |
| 项目经理 | 30 |
| 产品经理 | 25 |
| UI/UE设计师 | 20 |
| 软件架构师 | 20 |
| 测试主管 | 20 |
| 运营主管 | 20 |
| 项目经理 | 20 |
| 程序员1 | 20 |
| 程序员2 | 20 |
| 程序员3 | 20 |
| 测试人员1 | 15 |
| 测试人员2 | 15 |
| 需求专家 | 20 |
| 质量专家 | 20 |
| 风险专家 | 20 |
| 采购员 | 5 |
| 资源分析师 | 15 |
| 团队建设费用 |  |
| 测试货物 | 100 |
| 间接成本 |  |
| 储备 |  |

## Schedule

| ID | WBS | Task | Duration | Start | Finish | Predecessors | Total slack | Free slack | Constraint | Resources | Work | Cost |
| --- | --- | --- | --- | --- | --- | --- | --- | --- | --- | --- | --- | --- |
| 1 | 1 | **启动** | 6d | 2019-03-14 | 2019-03-21 |  |  |  | as late as possible |  | 128h | 3,240 |
| 2 | 1.1 | 任命项目经理 | 1d | 2019-03-11 | 2019-03-11 |  | -3d | 0d |  | 项目经理 | 8h | 240 |
| 3 | 1.2 | 组建核心团队 | 1d | 2019-03-12 | 2019-03-12 | 2 | -3d | 0d |  | UI/UE设计师; 测试主管; 产品经理; 软件架构师; 项目经理; 运营主管 | 48h | 1,080 |
| 4 | 1.3 | 干系人分析 | 1d | 2019-03-13 | 2019-03-13 | 3 | -3d | 0d | finish no later than 2019-03-17 | 产品经理; 项目经理; 运营主管 | 24h | 600 |
| 5 | 1.4 | 确定项目发起人 | 2d | 2019-03-14 | 2019-03-15 | 4 | -3d | 0d | finish no later than 2019-03-16 | 项目经理 | 16h | 480 |
| 6 | 1.5 | 制订章程 | 1d | 2019-03-20 | 2019-03-20 | 5FF | 0d |  |  | 项目经理 | 8h | 240 |
| 7 | 1.6 | 项目启动大会 | 1d | 2019-03-21 | 2019-03-21 | 6 | 0d |  |  | 项目经理; 产品经理; 运营主管 | 24h | 600 |
| 8 | 2 | **规划** | 22d | 2019-03-22 | 2019-04-22 |  | 0d |  | as late as possible |  | 240h | 6,400 |
| 9 | 2.1 | **规划范围** | 3d | 2019-03-22 | 2019-03-26 |  | 0d |  | as late as possible |  | 48h | 1,240 |
| 10 | 2.1.1 | 制定需求说明书 | 1d | 2019-03-22 | 2019-03-22 | 7 | 0d |  |  | 项目经理; 软件架构师 | 16h | 400 |
| 11 | 2.1.2 | 页面设计 | 1d | 2019-03-22 | 2019-03-22 | 10FF | 30d |  |  | UI/UE设计师 | 8h | 160 |
| 12 | 2.1.3 | 范围说明书 | 1d | 2019-03-25 | 2019-03-25 | 10 | 0d |  |  | 项目经理; 产品经理 | 16h | 440 |
| 13 | 2.1.4 | 创建WBS | 1d | 2019-03-26 | 2019-03-26 | 12 | 0d |  |  | 项目经理 | 8h | 240 |
| 14 | 2.2 | **规划时间** | 5d | 2019-03-27 | 2019-04-02 |  | 0d |  | as late as possible |  | 40h | 1,200 |
| 15 | 2.2.1 | 排列工作包顺序 | 1d | 2019-03-27 | 2019-03-27 | 13 | 0d |  |  | 项目经理 | 8h | 240 |
| 16 | 2.2.2 | 估算资源 | 1d | 2019-03-28 | 2019-03-28 | 15 | 0d |  |  | 项目经理 | 8h | 240 |
| 17 | 2.2.3 | 估算持续时间 | 1d | 2019-03-29 | 2019-03-29 | 16 | 0d |  |  | 项目经理 | 8h | 240 |
| 18 | 2.2.4 | 制定进度计划 | 2d | 2019-04-01 | 2019-04-02 | 17 | 0d |  |  | 项目经理 | 16h | 480 |
| 19 | 2.3 | **规划成本** | 3d | 2019-04-03 | 2019-04-05 |  | 0d |  | as late as possible |  | 24h | 720 |
| 20 | 2.3.1 | 项目成本估算 | 1d | 2019-04-03 | 2019-04-03 | 18 | 0d |  | finish no later than 2019-04-04 | 项目经理 | 8h | 240 |
| 21 | 2.3.2 | 项目预算 | 2d | 2019-04-04 | 2019-04-05 | 20 | 0d |  |  | 项目经理 | 16h | 480 |
| 22 | 2.4 | **规划质量** | 3d | 2019-04-08 | 2019-04-10 |  | 0d |  | as late as possible |  | 40h | 720 |
| 23 | 2.4.1 | 制定测试计划 | 2d | 2019-04-08 | 2019-04-09 | 21 | 0d |  |  | 测试主管 | 16h | 320 |
| 24 | 2.4.2 | 设计测试用例 | 1d | 2019-04-10 | 2019-04-10 | 23 | 0d |  |  | 测试人员1; 测试人员2; 测试主管 | 24h | 400 |

| ID | WBS | Task | Type | Duration | Start | Finish | Predecessors | Total slack | Constraint | Resources | Work | Cost |
| --- | --- | --- | --- | --- | --- | --- | --- | --- | --- | --- | --- | --- |
| 25 | 2.5 | **规划人力资源** |  | 8d | 2019-04-11 | 2019-04-22 |  | 0d | as late as possible |  | 88h | 2,520 |
| 26 | 2.5.1 | 制定人力资源计划 |  | 2d | 2019-04-11 | 2019-04-12 | 24 | 0d |  | 项目经理 | 16h | 480 |
| 27 | 2.5.2 | 制定人力资源管理计划 |  | 2d | 2019-04-15 | 2019-04-16 | 26 | 0d |  | 项目经理 | 16h | 480 |
| 28 | 2.5.3 | **规划风险** |  | 3d | 2019-04-17 | 2019-04-19 |  | 0d | as late as possible |  | 48h | 1,320 |
| 29 | 2.5.3.1 | 预估风险 |  | 1d | 2019-04-17 | 2019-04-17 | 27 | 0d |  | 产品经理; 项目经理 | 16h | 440 |
| 30 | 2.5.3.2 | 制定风险应对策略 |  | 1d | 2019-04-18 | 2019-04-18 | 29 | 0d |  | 产品经理; 项目经理 | 16h | 440 |
| 31 | 2.5.3.3 | 制定风险登记册 |  | 1d | 2019-04-19 | 2019-04-19 | 30 | 0d |  | 产品经理; 项目经理 | 16h | 440 |
| 32 | 2.5.4 | 规划整合 |  | 1d | 2019-04-22 | 2019-04-22 | 31 | 0d |  | 项目经理 | 8h | 240 |
| 33 | 3 | **执行与监控** |  | 24d | 2019-04-23 | 2019-05-24 |  |  | as late as possible |  | 424h | 8,920 |
| 34 | 3.1 | 组建项目团队 |  | 1d | 2019-04-23 | 2019-04-23 | 32 | 0d |  | UI/UE设计师; 测试主管; 软件架构师; 项目经理 | 32h | 720 |
| 35 | 3.2 | **项目执行** |  | 8d | 2019-04-24 | 2019-05-03 |  |  | as late as possible |  | 152h | 3,040 |
| 36 | 3.2.1 | **用户模块** |  | 5d | 2019-04-24 | 2019-04-30 |  |  | as late as possible |  | 88h | 1,760 |
| 37 | 3.2.1.1 | 登录注册 | manual | 1d | 2019-04-24 | 2019-04-24 | 34 |  |  | 程序员1 | 8h | 160 |
| 38 | 3.2.1.2 | 首页 | manual | 1d | 2019-04-25 | 2019-04-25 | 37 |  | start no later than 2019-04-25 | 程序员2 | 8h | 160 |
| 39 | 3.2.1.3 | 会话 | manual | 1d | 2019-04-25 | 2019-04-25 | 38SS |  | start no later than 2019-04-27 | 程序员1 | 8h | 160 |
| 40 | 3.2.1.4 | 个人信息 | manual | 2d | 2019-04-26 | 2019-04-27 |  |  | as late as possible | 程序员3 | 16h | 320 |
| 41 | 3.2.1.5 | 接受兼职活动 | manual | 2d | 2019-04-27 | 2019-04-28 |  |  | as late as possible | 程序员2 | 16h | 320 |
| 42 | 3.2.1.6 | 兼职流程 | manual | 2d | 2019-04-27 | 2019-04-28 |  |  |  | 程序员3 | 16h | 320 |
| 43 | 3.2.1.7 | 定位 | manual | 1d | 2019-04-26 | 2019-04-26 |  |  | as late as possible | 程序员1 | 8h | 160 |
| 44 | 3.2.1.8 | 附近的兼职信息 | manual | 1d | 2019-04-30 | 2019-04-30 |  |  | as late as possible | 程序员3 | 8h | 160 |
| 45 | 3.2.2 | **发表职位模块** |  | 3d | 2019-04-30 | 2019-05-02 |  |  | as late as possible |  | 40h | 800 |
| 46 | 3.2.2.1 | 发布兼职信息 | manual | 1d | 2019-05-01 | 2019-05-01 | 34 |  |  | 程序员2 | 8h | 160 |
| 47 | 3.2.2.2 | 管理兼职信息 | manual | 1d | 2019-05-01 | 2019-05-01 | 46 |  |  | 程序员3 | 8h | 160 |
| 48 | 3.2.2.3 | 兼职动态信息 | manual | 1d | 2019-04-30 | 2019-04-30 | 47 |  |  | 程序员1 | 8h | 160 |
| 49 | 3.2.2.4 | 统计分析 | manual | 2d | 2019-05-01 | 2019-05-02 |  |  | as late as possible | 程序员1 | 16h | 320 |

| ID | WBS | Task | Type | Duration | Start | Finish | Predecessors | Total slack | Free slack | Constraint | Resources | Work | Cost |
| --- | --- | --- | --- | --- | --- | --- | --- | --- | --- | --- | --- | --- | --- |
| 50 | 3.2.3 | **接受职位模块** |  | 2d | 2019-05-02 | 2019-05-03 |  |  |  | as late as possible |  | 24h | 480 |
| 51 | 3.2.3.1 | 管理将兼职信息 | manual | 1d | 2019-05-02 | 2019-05-02 |  |  |  | as late as possible | 程序员2 | 8h | 160 |
| 52 | 3.2.3.2 | 兼职同台信息 | manual | 1d | 2019-05-02 | 2019-05-03 | 34 |  |  |  | 程序员3 | 8h | 160 |
| 53 | 3.2.3.3 | 统计分析 | manual | 1d | 2019-05-03 | 2019-05-03 | 52 |  |  |  | 程序员1 | 8h | 160 |
| 54 | 3.3 | **项目监控** |  | 7d | 2019-05-03 | 2019-05-11 |  |  |  | as late as possible |  | 96h | 2,200 |
| 55 | 3.3.1 | 各项指标监控 | manual | 1d | 2019-05-06 | 2019-05-06 |  |  |  |  | UI/UE设计师; 测试主管; 产品经理; 软件架构师; 项目经理; 运营主管 | 48h | 1,080 |
| 56 | 3.3.2 | 监控评审 | manual | 1d | 2019-05-08 | 2019-05-08 | 55 |  |  |  | 产品经理; 项目经理 | 16h | 440 |
| 57 | 3.3.3 | 变更评审 | manual | 1d | 2019-05-10 | 2019-05-10 | 56 |  |  |  | 产品经理; 软件架构师 | 16h | 360 |
| 58 | 3.3.4 | 例会 | manual | 1d | 2019-05-11 | 2019-05-11 | 57 |  |  |  | 测试主管; 软件架构师 | 16h | 320 |
| 59 | 3.4 | **管理干系人** |  | 2d | 2019-05-13 | 2019-05-14 |  |  |  | as late as possible |  | 32h | 760 |
| 60 | 3.4.1 | 发布项目信息 | manual | 1d | 2019-05-13 | 2019-05-13 | 58 |  |  |  | 产品经理; 运营主管 | 16h | 360 |
| 61 | 3.4.2 | 干系人沟通 | manual | 1d | 2019-05-13 | 2019-05-13 | 62 |  |  |  | 项目经理 | 8h | 240 |
| 62 | 3.4.3 | 报告监控指标 | manual | 1d | 2019-05-14 | 2019-05-14 | 60 |  |  |  | 运营主管 | 8h | 160 |
| 63 | 3.5 | **团队建设** |  | 2d | 2019-05-14 | 2019-05-15 |  |  |  | as late as possible |  | 112h | 2,200 |
| 64 | 3.5.1 | 培训 | manual | 1d | 2019-05-14 | 2019-05-14 | 34 |  |  |  | 测试人员1; 测试人员2; 程序员1; 程序员2; 程序员3 | 40h | 720 |
| 65 | 3.5.2 | 娱乐 | manual | 1d | 2019-05-15 | 2019-05-15 | 34 |  |  |  | 测试人员1; 测试人员2; 程序员2; 程序员3; 程序员1 | 40h | 720 |
| 66 | 3.5.3 | 沟通 | manual | 1d | 2019-05-15 | 2019-05-15 | 34 |  |  |  | UI/UE设计师; 测试主管; 产品经理; 项目经理 | 32h | 760 |
| 67 | 4 | **收尾** |  | 2d | 2019-05-24 | 2019-05-27 |  |  |  | as late as possible |  | 112h | 2,600 |
| 68 | 4.1 | 项目最终验收 |  | 2d | 2019-05-23 | 2019-05-24 | 61 | 7d | 0d | start no later than 2019-05-23 | 项目经理; UI/UE设计师; 测试主管; 产品经理; 运营主管 | 80h | 1,840 |
| 69 | 4.2 | 项目内部收尾 |  | 1d | 2019-05-27 | 2019-05-27 | 63 | 7d | 0d | finish no later than 2019-05-27 | 项目经理; UI/UE设计师; 测试主管; 产品经理 | 32h | 760 |
